# Sist_Gestion_de_No_Conformidades

How a schedule from MS Project changed from version to version. A marks actual dates.

## Version 1 (saved 2019-10-11)

Note of the change: Actualización de directorios

| ID | WBS | Task | Duration | Start | Finish | Predecessors | Complete | Total float |
| --- | --- | --- | --- | --- | --- | --- | --- | --- |
| 1 | 1 | **Automatización del Proceso de No Conformidades** | 101d | 2019-09-07 A | 2019-12-30 |  | 20% | 0d |
| 2 | 1.1 | **Fase de Inicio** | 27d | 2019-09-07 A | 2019-10-07 A |  | 100% |  |
| 3 | 1.1.1 | **Modelado de procesos** | 15d | 2019-09-07 A | 2019-09-24 A |  | 100% |  |
| 4 |  | Describir el sistema propuesto y sus características | 0.5d | 2019-09-07 A | 2019-09-07 A |  | 100% |  |
| 5 |  | Describir el sistema propuesto y sus características | 0.5d | 2019-09-07 A | 2019-09-09 A | 4 | 100% |  |
| 6 |  | Seleccionar el gestor de configuración a utilizar | 2d | 2019-09-09 A | 2019-09-10 A | 5 | 100% |  |
| 7 |  | Identificar los elementos de configuración, los componentes y los productos | 3d | 2019-09-10 A | 2019-09-12 A | 6SS+5% | 100% |  |
| 8 | 1.1.1.5 | **Generar Modelo de CU del Negocio** | 14d | 2019-09-09 A | 2019-09-24 A |  | 100% |  |
| 9 | 1.1.1.5.1 | **Elaborar marco teórico** | 8d | 2019-09-09 A | 2019-09-17 A |  | 100% |  |
| 10 |  | Identificar los procesos a automatizar | 5d | 2019-09-09 A | 2019-09-13 A | 6SS | 100% |  |
| 11 |  | Identificar la tecnología a utilizar para el desarrollo del proyecto | 3d | 2019-09-13 A | 2019-09-17 A | 10 | 100% |  |
| 12 |  | Identificar actores, trabajadores y posibles casos de uso del negocio | 2d | 2019-09-09 A | 2019-09-10 A | 10SS | 100% |  |
| 13 |  | Construir diagrama de casos de uso | 1d | 2019-09-10 A | 2019-09-11 A | 12 | 100% |  |
| 14 |  | Describir los procesos a partir del diagrama de actividades | 2d | 2019-09-11 A | 2019-09-13 A | 13 | 100% |  |
| 15 |  | Conformar la Planilla de Especifícación de cada caso de uso | 3d | 2019-09-13 A | 2019-09-17 A | 14 | 100% |  |
| 16 |  | Realizar lista de chequeo de los artefactos | 2d | 2019-09-17 A | 2019-09-19 A | 15, 11 | 100% |  |
| 17 |  | Realizar commit de los artefactos | 1d | 2019-09-17 A | 2019-09-18 A | 15 | 100% |  |
| 18 | 1.1.1.5.8 | **Generar Modelo de Análisis/Diseño del Negocio** | 6d | 2019-09-17 A | 2019-09-24 A |  | 100% |  |
| 19 |  | Describir las entidades del negocio | 2d | 2019-09-17 A | 2019-09-19 A | 15 | 100% |  |
| 20 |  | Desarrollar modelos de dominio que represente la unidad de negocio | 1d | 2019-09-19 A | 2019-09-20 A | 19 | 100% |  |
| 21 |  | Identificar las reglas de negocio | 1d | 2019-09-20 A | 2019-09-21 A | 20 | 100% |  |
| 22 |  | Realizar lista de chequeo de los artefactos | 2d | 2019-09-21 A | 2019-09-24 A | 21 | 100% |  |
| 23 |  | Realizar commit de los artefactos | 1d | 2019-09-21 A | 2019-09-23 A | 21 | 100% |  |
| 24 | 1.1.2 | **Análisis de Requerimientos** | 14d | 2019-09-21 A | 2019-10-07 A |  | 100% |  |
| 25 | 1.1.2.1 | **Generar Modelo de Caso de Uso** | 14d | 2019-09-21 A | 2019-10-07 A |  | 100% |  |
| 26 |  | Obtener lista de requisitos candidatos | 3d | 2019-09-21 A | 2019-09-25 A | 21 | 100% |  |
| 27 |  | Definir actores del sistema | 1d | 2019-09-25 A | 2019-09-26 A | 26 | 100% |  |
| 28 |  | Elaborar breve descripción de los casos de usos del sistema | 3d | 2019-09-26 A | 2019-09-28 A | 27 | 100% |  |
| 29 |  | Construir diagrama de casos de uso del sistema | 1d | 2019-09-28 A | 2019-09-30 A | 28 | 100% |  |
| 30 |  | Determinar los beneficios tangibles e intangibles | 2d | 2019-09-30 A | 2019-10-02 A | 29 | 100% |  |
| 31 |  | Estimar costo y esfuerzo | 2d | 2019-10-02 A | 2019-10-04 A | 30 | 100% |  |
| 32 |  | Realizar lista de chequeo de los artefactos | 2d | 2019-10-04 A | 2019-10-07 A | 31 | 100% |  |
| 33 |  | Realizar commit de los artefactos | 1d | 2019-10-04 A | 2019-10-05 A | 31 | 100% |  |
| 34 |  | Objetivos del sistema | 0d | 2019-10-07 A | 2019-10-07 A | 32 | 100% |  |
| 35 | 1.3 | **Fase de Elaboración** | 31d | 2019-10-07 A | 2019-11-12 |  | 8% | 43d |
| 36 | 1.3.1 | **Análisis y Diseño** | 31d | 2019-10-07 A | 2019-11-12 |  | 8% | 43d |
| 37 | 1.3.1.1 | **Generar Modelo de Análisis** | 13d | 2019-10-07 A | 2019-10-22 |  | 19% | 61d |
| 38 |  | Definir requisitos funcionales del sistema | 1d | 2019-10-07 A | 2019-10-08 A | 34 | 100% |  |
| 39 |  | Construir diagrama de paquetes | 2d | 2019-10-08 A | 2019-10-11 | 38 | 81% | 0d |
| 40 |  | Definir una arquitectura candidata | 3d | 2019-10-11 | 2019-10-15 | 39 |  | 0d |
| 41 |  | Elaborar especificación de los requisitos del sistema | 2d | 2019-10-15 | 2019-10-17 | 40 |  | 0d |
| 42 |  | Diseñar diagrama de clases de análisis | 2d | 2019-10-17 | 2019-10-18 | 41 |  | 0d |
| 43 |  | Construir diagrama de secuencia | 1d | 2019-10-18 | 2019-10-19 | 42 |  | 0d |
| 44 |  | Realizar lista de chequeo de los artefactos | 2d | 2019-10-19 | 2019-10-22 | 43 |  | 61d |
| 45 |  | Realizar commit de los artefactos | 1d | 2019-10-19 | 2019-10-21 | 43 |  | 62d |
| 46 | 1.3.1.2 | **Generar Modelo de Mapa de Navegación** | 6d | 2019-10-19 | 2019-10-28 |  |  | 0d |
| 47 |  | Diseñar prototipo de interfaz de usuario | 4d | 2019-10-19 | 2019-10-24 | 43 |  | 0d |
| 48 |  | Diseñar diagrama de estado | 2d | 2019-10-24 | 2019-10-28 | 47 |  | 0d |
| 49 | 1.3.1.3 | **Generar Modelo de Diseño** | 14d | 2019-10-28 | 2019-11-12 |  |  | 0d |
| 50 |  | Definir mecanismos de diseño | 2d | 2019-10-28 | 2019-10-30 | 48 |  | 0d |
| 51 |  | Diseñar diagrama de clases de diseño | 2d | 2019-10-30 | 2019-11-01 | 50 |  | 0d |
| 52 |  | Construir diagrama de secuecia de diseño | 2d | 2019-11-01 | 2019-11-04 | 51 |  | 0d |
| 53 |  | Diseñar subsistemas | 2d | 2019-11-04 | 2019-11-06 | 52 |  | 0d |
| 54 |  | Definir patrones de diseño | 1d | 2019-11-06 | 2019-11-06 | 53 |  | 0d |
| 55 |  | Diseñar modelo físico y lógico de la base de datos | 3d | 2019-11-07 | 2019-11-09 | 54 |  | 0d |
| 56 |  | Realizar lista de chequeo de los artefactos | 2d | 2019-11-09 | 2019-11-12 | 55 |  | 0d |
| 57 |  | Realizar commit de los artefactos | 1d | 2019-11-09 | 2019-11-11 | 55 |  | 44d |
| 58 |  | Línea base de arquitectura | 0d | 2019-11-12 | 2019-11-12 | 56 |  | 0d |
| 59 | 1.5 | **Fase de Construcción** | 40d | 2019-11-12 | 2019-12-26 |  |  | 0d |
| 60 | 1.5.1 | **Implementación** | 33d | 2019-11-12 | 2019-12-18 |  |  | 0d |
| 61 | 1.5.1.1 | **Generar Modelo de Implementación** | 33d | 2019-11-12 | 2019-12-18 |  |  | 0d |
| 62 |  | Identificar los componentes a programar | 26d | 2019-11-12 | 2019-12-11 | 58 |  | 0d |
| 63 |  | Identificar los componentes a reutilizar | 26d | 2019-11-12 | 2019-12-11 | 62SS |  | 0d |
| 64 |  | Construir el diagrama de componentes | 26d | 2019-11-12 | 2019-12-11 | 63SS |  | 0d |
| 65 |  | Crear la base de datos | 20d | 2019-11-12 | 2019-12-04 | 64SS |  | 0d |
| 66 |  | Programar el proceso de no conformidades | 30d | 2019-11-15 | 2019-12-18 | 65SS+1.5% |  | 0d |
| 67 |  | Programar las funciones de usuario | 10d | 2019-12-02 | 2019-12-13 | 66SS+5% |  | 15d |
| 68 | 1.5.2 | **Prueba** | 9d | 2019-12-16 | 2019-12-26 |  |  | 0d |
| 69 |  | Diseñar los casos de prueba | 5d | 2019-12-16 | 2019-12-21 | 66FF+1% |  | 0d |
| 70 |  | Diseñar los procedimientos de prueba | 3d | 2019-12-17 | 2019-12-20 | 69FF-2.5% |  | 8.25d |

| ID | WBS | Task | Duration | Start | Finish | Predecessors | Total float |
| --- | --- | --- | --- | --- | --- | --- | --- |
| 71 |  | Probar los algoritmos programados | 2d | 2019-12-19 | 2019-12-21 | 69FF | 7d |
| 72 |  | Determinar la calidad del software | 2d | 2019-12-19 | 2019-12-21 | 69FF | 0d |
| 73 |  | Verificar la especificación de los requisitos frente al sistema liberado | 2d | 2019-12-21 | 2019-12-24 | 72 | 0d |
| 74 |  | Validar el diseño y arquitectiura del producto final | 2d | 2019-12-24 | 2019-12-26 | 73 | 0d |
| 75 |  | Validar la implementación de los requisitos | 2d | 2019-12-24 | 2019-12-26 | 74SS | 0d |
| 76 |  | Capacidad operativa inicial | 0d | 2019-12-26 | 2019-12-26 | 75 | 0d |
| 77 | 1.7 | **Fase de Transición** | 3d | 2019-12-26 | 2019-12-30 |  | 0d |
| 78 | 1.7.1 | **Despliegue** | 3d | 2019-12-26 | 2019-12-30 |  | 0d |
| 79 |  | Especificar la instalación del producto | 2d | 2019-12-26 | 2019-12-28 | 76 | 0d |
| 80 |  | Probar la instalación del producto | 2d | 2019-12-26 | 2019-12-28 | 79SS | 0d |
| 81 |  | Crear el material para la consulta y capacitación del usuario | 3d | 2019-12-26 | 2019-12-30 | 80SS | 0d |
| 82 |  | Validar el diseño del producto de software | 2d | 2019-12-26 | 2019-12-28 | 81SS | 0d |
| 83 |  | Entregar el producto funcionando al usuario | 1d | 2019-12-28 | 2019-12-30 | 82 | 0d |
| 84 | 1.7.2 | **Gestión de configuración y el cambio** | 2d | 2019-12-26 | 2019-12-28 |  | 1d |
| 85 |  | Varificar los cambios a los requisitos | 1d | 2019-12-26 | 2019-12-27 | 76 | 1d |
| 86 |  | Verificar los cambios a los artefactos | 1d | 2019-12-27 | 2019-12-28 | 85 | 1d |
| 87 |  | Lanzamiento del producto | 0d | 2019-12-30 | 2019-12-30 | 83 | 0d |

## Version 2 (saved 2019-10-18)

Note of the change: Cambios de prueba

Last finish stays 2019-12-30.

Changed:

| ID | Task | Other |
| --- | --- | --- |
| 4 | Organizar equipo de desarrollo y definir roles | was named Describir el sistema propuesto y sus características |
| 5 | Organizar equipo de desarrollo y definir roles | was named Describir el sistema propuesto y sus características |
